# A2_GroupXX_ProjectLibre

How a schedule from ProjectLibre changed from version to version. A marks actual dates.

## Version 1 (saved 2026-09-30, file A2_GroupXX_ProjectLibre.pod)

| ID | Task | Duration | Start | Finish | Predecessors | Complete |
| --- | --- | --- | --- | --- | --- | --- |
| 1 | [1.1] Initiation & charter | 10d | 2026-07-06 | 2026-07-17 |  | 100% |
| 2 | [M1] Charter approved | 0d | 2026-07-20 | 2026-07-20 | 1 | 100% |
| 3 | [1.2] Planning & baselines | 8d | 2026-07-20 | 2026-07-29 | 2 | 100% |
| 4 | [1.3] Monitoring, control & CCB | 138d | 2026-07-30 | 2027-02-19 | 3 | 30% |
| 5 | [1.4] Closure | 5d | 2027-03-19 | 2027-03-25 | 37, 4 |  |
| 6 | [M7] Project closed | 0d | 2027-03-25 | 2027-03-25 | 5 |  |
| 7 | [2.1] Current-state portal audit | 10d | 2026-07-20 | 2026-07-31 | 2 | 100% |
| 8 | [2.2] Requirements workshops | 10d | 2026-08-03 | 2026-08-14 | 7, 3 | 100% |
| 9 | [2.3] Solution & SSO architecture | 10d | 2026-08-17 | 2026-08-28 | 8 | 100% |
| 10 | [2.4] Privacy Impact Assessment | 10d | 2026-08-24 | 2026-09-04 | 9SS+5d | 100% |
| 11 | [2.5] UX & accessibility prototype | 15d | 2026-08-17 | 2026-09-04 | 8 | 100% |
| 12 | [M2] Design sign-off | 0d | 2026-09-07 | 2026-09-07 | 9, 10, 11 | 100% |
| 13 | [3.1] Sprint 1 SSO & dashboard | 10d | 2026-08-31 | 2026-09-11 | 9 | 100% |
| 14 | [3.2] Sprint 2 Enrolment & timetable | 10d | 2026-09-14 | 2026-09-25 | 13, 12 | 80% |
| 15 | [3.3] Sprint 3 Fees & payments | 10d | 2026-09-28 | 2026-10-12 | 14 |  |
| 16 | [3.4] Sprint 4 Services & helpdesk | 10d | 2026-10-13 | 2026-10-26 | 15 |  |
| 17 | [3.5] Integration APIs (SIS, LMS, Finance) | 20d | 2026-08-31 | 2026-09-25 | 9 | 70% |
| 18 | [3.6] Content & notifications configuration | 10d | 2026-09-28 | 2026-10-12 | 14 |  |
| 19 | [M3] Build complete | 0d | 2026-10-26 | 2026-10-26 | 16, 17, 18 |  |
| 20 | [4.1] Data mapping & cleansing | 10d | 2026-08-31 | 2026-09-11 | 9 | 100% |
| 21 | [4.2] Migration scripts & trial migration 1 | 25d | 2026-09-14 | 2026-10-19 | 20 | 30% |
| 22 | [4.3] Trial migration 2 & reconciliation | 20d | 2026-10-20 | 2026-11-16 | 21, 17 |  |
| 23 | [M4] Trial migration passed | 0d | 2026-11-16 | 2026-11-16 | 22 |  |
| 24 | [4.4] Final migration | 5d | 2027-01-21 | 2027-01-28 | 33 |  |
| 25 | [5.1] System integration testing | 15d | 2026-11-17 | 2026-12-07 | 19, 23 |  |
| 26 | [5.2] Security/penetration testing | 10d | 2026-10-27 | 2026-11-09 | 19 |  |
| 27 | [5.3] WCAG 2.1 AA audit | 10d | 2026-10-20 | 2026-11-02 | 16FF+5d |  |
| 28 | [5.4] Load testing (enrolment peak) | 10d | 2026-11-24 | 2026-12-07 | 25SS+5d |  |
| 29 | [5.5] User acceptance testing | 15d | 2026-12-08 | 2027-01-06 | 25 |  |
| 30 | [5.6] Regression & defect remediation | 8d | 2026-12-15 | 2027-01-04 | 29SS+5d |  |
| 31 | [M5] UAT sign-off | 0d | 2027-01-06 | 2027-01-06 | 29, 26, 27, 28, 30 |  |
| 32 | [6.1] Training & change comms | 20d | 2026-10-27 | 2026-11-23 | 19 |  |
| 33 | [6.2] Faculty pilot | 10d | 2027-01-07 | 2027-01-20 | 31 |  |
| 34 | [6.3] Go-live cutover | 5d | 2027-01-29 | 2027-02-04 | 24, 32 |  |
| 35 | [M6] Go-live | 0d | 2027-02-04 | 2027-02-04 | 34 |  |
| 36 | [6.4] Hypercare | 20d | 2027-02-05 | 2027-03-04 | 35 |  |
| 37 | [6.5] Legacy portal decommissioning | 10d | 2027-03-05 | 2027-03-18 | 36 |  |

## Version 2 (saved 2026-09-30, file A2_GroupXX_schedule.xml)

Last finish 2027-03-25 → 2027-03-11 (-14d). Complete tasks 11 → 0.

Changed:

| ID | Task | Start | Finish | Duration | Complete | Other |
| --- | --- | --- | --- | --- | --- | --- |
| 1 | [1.1] Initiation & charter |  |  |  | 100% → 0% | baseline start 2026-07-06 → none; baseline finish 2026-07-17 → none |
| 2 | [M1] Charter approved | 2026-07-20 → 2026-07-17 (-3d) | 2026-07-20 → 2026-07-17 (-3d) |  | 100% → 0% | baseline start 2026-07-17 → none; baseline finish 2026-07-17 → none |
| 3 | [1.2] Planning & baselines |  |  |  | 100% → 0% | baseline start 2026-07-20 → none; baseline finish 2026-07-29 → none |
| 4 | [1.3] Monitoring, control & CCB |  |  |  | 30% → 0% | baseline start 2026-07-30 → none; baseline finish 2027-02-19 → none |
| 5 | [1.4] Closure | 2027-03-19 → 2027-03-05 (-14d) | 2027-03-25 → 2027-03-11 (-14d) |  |  | baseline start 2027-03-05 → none; baseline finish 2027-03-11 → none |
| 6 | [M7] Project closed | 2027-03-25 → 2027-03-11 (-14d) | 2027-03-25 → 2027-03-11 (-14d) |  |  | baseline start 2027-03-11 → none; baseline finish 2027-03-11 → none |
| 7 | [2.1] Current-state portal audit |  |  |  | 100% → 0% | baseline start 2026-07-20 → none; baseline finish 2026-07-31 → none |
| 8 | [2.2] Requirements workshops |  |  |  | 100% → 0% | baseline start 2026-08-03 → none; baseline finish 2026-08-14 → none |
| 9 | [2.3] Solution & SSO architecture |  |  |  | 100% → 0% | resources Solution Architect [120%]; Security Consultant [30%]; Developer [60%] → Solution Architect; Security Consultant [25%]; Developer [50%]; baseline start 2026-08-17 → none; baseline finish 2026-08-28 → none |
| 10 | [2.4] Privacy Impact Assessment |  |  |  | 100% → 0% | baseline start 2026-08-24 → none; baseline finish 2026-09-04 → none |
| 11 | [2.5] UX & accessibility prototype |  |  |  | 100% → 0% | baseline start 2026-08-17 → none; baseline finish 2026-09-04 → none |
| 12 | [M2] Design sign-off | 2026-09-07 → 2026-09-04 (-3d) | 2026-09-07 → 2026-09-04 (-3d) |  | 100% → 0% | baseline start 2026-09-04 → none; baseline finish 2026-09-04 → none |
| 13 | [3.1] Sprint 1 SSO & dashboard |  |  |  | 100% → 0% | baseline start 2026-08-31 → none; baseline finish 2026-09-11 → none |
| 14 | [3.2] Sprint 2 Enrolment & timetable |  |  |  | 80% → 0% | baseline start 2026-09-14 → none; baseline finish 2026-09-25 → none |
| 15 | [3.3] Sprint 3 Fees & payments |  |  |  |  | baseline start 2026-09-28 → none; baseline finish 2026-10-12 → none |
| 16 | [3.4] Sprint 4 Services & helpdesk |  |  |  |  | baseline start 2026-10-13 → none; baseline finish 2026-10-26 → none |
| 17 | [3.5] Integration APIs (SIS, LMS, Finance) |  |  |  | 70% → 0% | baseline start 2026-08-31 → none; baseline finish 2026-09-25 → none |
| 18 | [3.6] Content & notifications configuration |  |  |  |  | baseline start 2026-09-28 → none; baseline finish 2026-10-12 → none |
| 19 | [M3] Build complete |  |  |  |  | baseline start 2026-10-26 → none; baseline finish 2026-10-26 → none |
| 20 | [4.1] Data mapping & cleansing |  |  |  | 100% → 0% | resources Data Engineer [120%]; Business Analyst [60%] → Data Engineer; Business Analyst [50%]; baseline start 2026-08-31 → none; baseline finish 2026-09-11 → none |
| 21 | [4.2] Migration scripts & trial migration 1 |  | 2026-10-19 → 2026-10-02 (-17d) | 25d → 15d | 30% → 0% | baseline start 2026-09-14 → none; baseline finish 2026-10-02 → none |
| 22 | [4.3] Trial migration 2 & reconciliation | 2026-10-20 → 2026-10-06 (-14d) | 2026-11-16 → 2026-11-02 (-14d) |  |  | baseline start 2026-10-06 → none; baseline finish 2026-11-02 → none |
| 23 | [M4] Trial migration passed | 2026-11-16 → 2026-11-02 (-14d) | 2026-11-16 → 2026-11-02 (-14d) |  |  | baseline start 2026-11-02 → none; baseline finish 2026-11-02 → none |
| 24 | [4.4] Final migration | 2027-01-21 → 2027-01-07 (-14d) | 2027-01-28 → 2027-01-13 (-15d) |  |  | baseline start 2027-01-07 → none; baseline finish 2027-01-13 → none |
| 25 | [5.1] System integration testing | 2026-11-17 → 2026-11-03 (-14d) | 2026-12-07 → 2026-11-23 (-14d) |  |  | baseline start 2026-11-03 → none; baseline finish 2026-11-23 → none |
| 26 | [5.2] Security/penetration testing |  |  |  |  | baseline start 2026-10-27 → none; baseline finish 2026-11-09 → none |
| 27 | [5.3] WCAG 2.1 AA audit |  |  |  |  | baseline start 2026-10-20 → none; baseline finish 2026-11-02 → none |
| 28 | [5.4] Load testing (enrolment peak) | 2026-11-24 → 2026-11-10 (-14d) | 2026-12-07 → 2026-11-23 (-14d) |  |  | baseline start 2026-11-10 → none; baseline finish 2026-11-23 → none |
| 29 | [5.5] User acceptance testing | 2026-12-08 → 2026-11-24 (-14d) | 2027-01-06 → 2026-12-14 (-23d) |  |  | baseline start 2026-11-24 → none; baseline finish 2026-12-14 → none |
| 30 | [5.6] Regression & defect remediation | 2026-12-15 → 2026-12-01 (-14d) | 2027-01-04 → 2026-12-10 (-25d) |  |  | baseline start 2026-12-01 → none; baseline finish 2026-12-10 → none |
| 31 | [M5] UAT sign-off | 2027-01-06 → 2026-12-14 (-23d) | 2027-01-06 → 2026-12-14 (-23d) |  |  | baseline start 2026-12-14 → none; baseline finish 2026-12-14 → none |
| 32 | [6.1] Training & change comms |  |  |  |  | baseline start 2026-10-27 → none; baseline finish 2026-11-23 → none |
| 33 | [6.2] Faculty pilot | 2027-01-07 → 2026-12-15 (-23d) | 2027-01-20 → 2027-01-06 (-14d) |  |  | baseline start 2026-12-15 → none; baseline finish 2027-01-06 → none |
| 34 | [6.3] Go-live cutover | 2027-01-29 → 2027-01-14 (-15d) | 2027-02-04 → 2027-01-20 (-15d) |  |  | baseline start 2027-01-14 → none; baseline finish 2027-01-20 → none |
| 35 | [M6] Go-live | 2027-02-04 → 2027-01-20 (-15d) | 2027-02-04 → 2027-01-20 (-15d) |  |  | baseline start 2027-01-20 → none; baseline finish 2027-01-20 → none |
| 36 | [6.4] Hypercare | 2027-02-05 → 2027-01-21 (-15d) | 2027-03-04 → 2027-02-18 (-14d) |  |  | baseline start 2027-01-21 → none; baseline finish 2027-02-18 → none |
| 37 | [6.5] Legacy portal decommissioning | 2027-03-05 → 2027-02-19 (-14d) | 2027-03-18 → 2027-03-04 (-14d) |  |  | baseline start 2027-02-19 → none; baseline finish 2027-03-04 → none |
